# 福莱特自研MES项目

Schedule from a web Gantt chart, 2025-11-18 to 2027-05-10.
Saturdays and Sundays are off

## Schedule

| ID | WBS | Task | Duration | Start | Finish | Complete | Status | inPeople |
| --- | --- | --- | --- | --- | --- | --- | --- | --- |
| 2 | 1 | 项目启动会 | 1d | 2025-11-18 | 2025-11-18 | 100% | done |  |
| 3 | 2 | **设计方案确认** | 49d | 2026-01-13 | 2026-03-20 | 100% | done |  |
| 4 | 2.1 | **安福业务部门确认** | 3d | 2026-01-13 | 2026-01-15 | 100% | done |  |
| 5 | 2.1.1 | 计划确认 | 1d | 2026-01-13 | 2026-01-13 | 100% | done |  |
| 6 | 2.1.2 | 加工确认 | 1d | 2026-01-13 | 2026-01-13 | 100% | done |  |
| 7 | 2.1.3 | 原料确认 | 1d | 2026-01-14 | 2026-01-14 | 100% | done |  |
| 8 | 2.1.4 | 压延确认 | 1d | 2026-01-14 | 2026-01-14 | 100% | done |  |
| 9 | 2.1.5 | 仓库确认 | 1d | 2026-01-14 | 2026-01-14 | 100% | done |  |
| 10 | 2.1.6 | 收片确认 | 1d | 2026-01-14 | 2026-01-14 | 100% | done |  |
| 11 | 2.1.7 | 品质确认 | 1d | 2026-01-15 | 2026-01-15 | 100% | done |  |
| 12 | 2.2 | 方案优化调整 | 4d | 2026-01-19 | 2026-01-22 | 100% | done |  |
| 13 | 2.3 | 财务需求确认 | 1d | 2026-01-21 | 2026-01-21 | 100% | done |  |
| 14 | 2.4 | 合格证沟通 | 1d | 2026-01-21 | 2026-01-21 | 100% | done |  |
| 15 | 2.5 | 销售图纸文件确认 | 3d | 2026-02-27 | 2026-03-03 | 100% | done |  |
| 16 | 2.6 | 方案业务签字确认 | 3d | 2026-03-18 | 2026-03-20 | 100% | done |  |
| 17 | 3 | 开发方案内部沟通 | 4d | 2026-01-27 | 2026-01-30 | 100% | done |  |
| 18 | 4 | **系统开发** | 84d | 2026-03-03 | 2026-06-26 | 100% |  |  |
| 19 | 4.1 | **建表** | 57d | 2026-03-03 | 2026-05-20 | 100% | done |  |
| 20 | 4.1.1 | 系统建表 | 9d | 2026-03-03 | 2026-03-13 | 100% | done | 伍良近 |
| 21 | 4.1.2 | 品质填报建表 | 3d | 2026-05-18 | 2026-05-20 | 100% | done |  |
| 22 | 4.2 | **开发** | 74d | 2026-03-17 | 2026-06-26 | 100% | done |  |
| 23 | 4.2.1 | 技术架构 | 33d | 2026-03-17 | 2026-04-30 | 100% | done | 伍良近 |
| 24 | 4.2.2 | 基础数据 | 50d | 2026-03-24 | 2026-06-01 | 100% | done | 李艺琴 |
| 25 | 4.2.3 | 销售订单管理 | 50d | 2026-03-24 | 2026-06-01 | 100% | done | 张锐瑶 |
| 26 | 4.2.4 | 计划管理 | 15d | 2026-03-24 | 2026-04-13 | 100% | done | 李阳 |
| 27 | 4.2.5 | 生产管理 | 49d | 2026-03-24 | 2026-05-29 | 100% | done | 金李斌 |
| 28 | 4.2.6 | 生产填报 | 18d | 2026-05-06 | 2026-05-29 | 100% | done | 金李斌 |
| 29 | 4.2.7 | 品质管理 | 45d | 2026-03-30 | 2026-05-29 | 100% | done | 陶宇超 |
| 30 | 4.2.8 | 品质填报 | 15d | 2026-05-25 | 2026-06-12 | 100% | done |  |
| 31 | 4.2.9 | 生产结果 | 49d | 2026-03-24 | 2026-05-29 | 100% | done | 杨加丰 |
| 32 | 4.2.10 | 推送清单 | 35d | 2026-04-13 | 2026-05-29 | 100% | done | 杨加丰 |
| 33 | 4.2.11 | 库存管理 | 35d | 2026-04-13 | 2026-05-29 | 100% | done | 李阳 |
| 34 | 4.2.12 | 开发集成测试 | 20d | 2026-06-01 | 2026-06-26 | 100% | done |  |

| ID | WBS | Task | Duration | Start | Finish | Predecessors | Complete | Status |
| --- | --- | --- | --- | --- | --- | --- | --- | --- |
| 35 | 5 | **UAT测试** | 35d | 2026-06-29 | 2026-08-14 |  | 70% | waiting |
| 36 | 5.1 | 单元模块、系统内测 | 35d | 2026-06-29 | 2026-08-14 |  | 70% | waiting |
| 37 | 5.2 | UAT问题跟进处理 | 35d | 2026-06-29 | 2026-08-14 |  | 70% | waiting |
| 38 | 6 | **培训** | 10d | 2026-08-17 | 2026-08-28 |  |  | waiting |
| 39 | 6.1 | 培训材料编写 | 5d | 2026-08-17 | 2026-08-21 |  |  | waiting |
| 40 | 6.2 | 系统动员会 | 1d | 2026-08-21 | 2026-08-21 |  |  | waiting |
| 41 | 6.3 | 系统培训 | 5d | 2026-08-24 | 2026-08-28 |  |  | waiting |
| 42 | 7 | **系统试运行** | 20d | 2026-08-17 | 2026-09-11 |  |  | waiting |
| 43 | 7.1 | 现场设备硬件确认 | 5d | 2026-08-24 | 2026-08-28 |  |  | waiting |
| 44 | 7.2 | 试运行环境搭建 | 5d | 2026-08-17 | 2026-08-21 |  |  | waiting |
| 45 | 7.3 | 试运行数据准备 | 10d | 2026-08-17 | 2026-08-28 |  |  | waiting |
| 46 | 7.4 | 系统试运行 | 10d | 2026-08-31 | 2026-09-11 |  |  | waiting |
| 47 | 7.5 | 功能优化 | 10d | 2026-08-31 | 2026-09-11 |  |  | waiting |
| 48 | 8 | **系统上线** | 40d | 2026-08-31 | 2026-10-23 |  |  | waiting |
| 49 | 8.1 | 正式环境部署 | 5d | 2026-08-31 | 2026-09-04 |  |  | waiting |
| 50 | 8.2 | 正式环境数据准备 | 5d | 2026-09-07 | 2026-09-11 | 49 |  | waiting |
| 51 | 8.3 | 正式上线 | 15d | 2026-09-14 | 2026-10-02 | 46 |  | waiting |
| 52 | 8.4 | 验收签字 | 15d | 2026-10-05 | 2026-10-23 | 51 |  | waiting |
| 53 | 9 | **南通** | 85d | 2026-09-21 | 2027-01-15 |  |  | waiting |
| 54 | 9.1 | 南通设备准备 | 35d | 2026-09-21 | 2026-11-06 |  |  | waiting |
| 55 | 9.2 | **系统试运行** | 30d | 2026-11-09 | 2026-12-18 |  |  | waiting |
| 56 | 9.2.1 | 现场设备硬件确认 | 5d | 2026-11-09 | 2026-11-13 |  |  | waiting |
| 57 | 9.2.2 | 试运行环境搭建 | 5d | 2026-11-09 | 2026-11-13 |  |  | waiting |
| 58 | 9.2.3 | 试运行数据准备 | 10d | 2026-11-09 | 2026-11-20 |  |  | waiting |
| 59 | 9.2.4 | 系统动员会 | 1d | 2026-11-20 | 2026-11-20 |  |  | waiting |
| 60 | 9.2.5 | 系统培训 | 5d | 2026-11-23 | 2026-11-27 | 58 |  | waiting |
| 61 | 9.2.6 | 系统试运行 | 15d | 2026-11-30 | 2026-12-18 | 60 |  | waiting |
| 62 | 9.2.7 | 系统针对性优化 | 15d | 2026-11-30 | 2026-12-18 |  |  | waiting |

| ID | WBS | Task | Duration | Start | Finish | Predecessors | Status |
| --- | --- | --- | --- | --- | --- | --- | --- |
| 63 | 9.3 | **正式上线** | 30d | 2026-12-07 | 2027-01-15 |  | waiting |
| 64 | 9.3.1 | 正式环境部署 | 5d | 2026-12-07 | 2026-12-11 |  | waiting |
| 65 | 9.3.2 | 正式环境数据准备 | 5d | 2026-12-14 | 2026-12-18 | 64 | waiting |
| 66 | 9.3.3 | 系统正式上线 | 20d | 2026-12-21 | 2027-01-15 | 61, 65 | waiting |
| 67 | 10 | **安福三期** | 75d | 2026-11-23 | 2027-03-05 |  | waiting |
| 68 | 10.1 | 三期设备准备 | 30d | 2026-11-23 | 2027-01-01 |  | waiting |
| 69 | 10.2 | **系统试运行** | 30d | 2027-01-04 | 2027-02-12 |  | waiting |
| 70 | 10.2.1 | 现场设备硬件确认 | 5d | 2027-01-04 | 2027-01-08 |  | waiting |
| 71 | 10.2.2 | 试运行环境搭建 | 5d | 2027-01-04 | 2027-01-08 |  | waiting |
| 72 | 10.2.3 | 试运行数据准备 | 5d | 2027-01-11 | 2027-01-15 | 71 | waiting |
| 73 | 10.2.4 | 系统动员会 | 1d | 2027-01-08 | 2027-01-08 |  | waiting |
| 74 | 10.2.5 | 系统培训 | 5d | 2027-01-11 | 2027-01-15 |  | waiting |
| 75 | 10.2.6 | 系统试运行 | 20d | 2027-01-18 | 2027-02-12 | 72, 74 | waiting |
| 76 | 10.2.7 | 系统针对性优化 | 20d | 2027-01-18 | 2027-02-12 |  | waiting |
| 77 | 10.3 | **系统正式上线** | 30d | 2027-01-25 | 2027-03-05 |  | waiting |
| 78 | 10.3.1 | 正式环境部署 | 5d | 2027-01-25 | 2027-01-29 |  | waiting |
| 79 | 10.3.2 | 正式环境数据准备 | 5d | 2027-02-01 | 2027-02-05 | 78 | waiting |
| 80 | 10.3.3 | 系统正式上线 | 15d | 2027-02-15 | 2027-03-05 | 75 | waiting |
| 81 | 11 | **越南** | 90d | 2026-12-28 | 2027-04-30 |  | waiting |
| 82 | 11.1 | 越南设备准备 | 30d | 2027-01-11 | 2027-02-19 |  | waiting |
| 83 | 11.2 | 越南版本准备 | 40d | 2026-12-28 | 2027-02-19 |  | waiting |
| 84 | 11.3 | **试运行** | 35d | 2027-02-22 | 2027-04-09 |  | waiting |
| 85 | 11.3.1 | 现场设备硬件确认 | 5d | 2027-02-22 | 2027-02-26 |  | waiting |
| 86 | 11.3.2 | 试运行环境搭建 | 5d | 2027-02-22 | 2027-02-26 |  | waiting |
| 87 | 11.3.3 | 试运行数据准备 | 5d | 2027-03-01 | 2027-03-05 | 86 | waiting |
| 88 | 11.3.4 | 系统动员会 | 1d | 2027-03-05 | 2027-03-05 |  | waiting |
| 89 | 11.3.5 | 系统培训 | 5d | 2027-03-08 | 2027-03-12 | 87, 88 | waiting |
| 90 | 11.3.6 | 系统试运行 | 20d | 2027-03-15 | 2027-04-09 | 89 | waiting |
| 91 | 11.3.7 | 系统针对性优化 | 20d | 2027-03-15 | 2027-04-09 |  | waiting |

| ID | WBS | Task | Duration | Start | Finish | Status |
| --- | --- | --- | --- | --- | --- | --- |
| 92 | 11.4 | **系统上线** | 25d | 2027-03-29 | 2027-04-30 | waiting |
| 93 | 11.4.1 | 正式环境部署 | 5d | 2027-03-29 | 2027-04-02 | waiting |
| 94 | 11.4.2 | 正式环境数据准备 | 10d | 2027-03-29 | 2027-04-09 | waiting |
| 95 | 11.4.3 | 系统上线 | 15d | 2027-04-12 | 2027-04-30 | waiting |
| 96 | 12 | 安福二期 | 1d | 2027-05-10 | 2027-05-10 | waiting |
